# Drone-Car Software Development

Schedule from MS Project, 2023-01-06 to 2023-08-22.

## Calendars

- Standard: Mon-Fri 08:00-12:00, 13:00-17:00; Sat-Sun off.

## Resources

| Resource | Group |
| --- | --- |
| Demetrius Johnson | Drone-Car Engineer |
| Ryan Sauer | Network Engineer |
| Olivia Pelligrini | Open CV Image Processing Engineer |
| Jonathan Schall | Open CV Image Processing Engineer |

## Schedule

| ID | WBS | Task | Type | Duration | Start | Finish | Predecessors | Total slack | Free slack | Constraint | Resources | Work |
| --- | --- | --- | --- | --- | --- | --- | --- | --- | --- | --- | --- | --- |
| 1 | 1 | Project Initiation | milestone | 0d | 2023-01-06 | 2023-01-06 |  | 4d | 0d |  |  |  |
| 2 | 2 | **Phase I - Project Specification** |  | 7d | 2023-02-06 | 2023-02-15 |  | 108d |  |  |  | 504h |
| 3 | 2.1 | Section 1.0 Intro/Scope |  | 1.75d | 2023-02-06 | 2023-02-07 |  | 108d | 0d | start no earlier than 2023-02-06 | Demetrius Johnson; Jonathan Schall; Olivia Pelligrini; Ryan Sauer | 56h |
| 4 | 2.2 | Section 2.0 Usage Scenario |  | 7d | 2023-02-06 | 2023-02-14 | 3SS | 134d |  |  | Ryan Sauer | 56h |
| 5 | 2.3 | Sections 4.1 Descrip. For Function n |  | 7d | 2023-02-06 | 2023-02-14 | 3SS | 134d |  |  | Demetrius Johnson; Jonathan Schall; Olivia Pelligrini; Ryan Sauer | 224h |
| 6 | 2.4 | Section 4.3 Use Case Diagram |  | 7d | 2023-02-06 | 2023-02-14 | 3SS | 134d |  |  | Olivia Pelligrini | 56h |
| 7 | 2.5 | Section 8.1 System Traceability matrix |  | 7d | 2023-02-06 | 2023-02-14 | 3SS | 134d |  |  | Jonathan Schall | 56h |
| 8 | 2.6 | Section 9.0 References |  | 7d | 2023-02-06 | 2023-02-14 | 3SS | 108d | 0d |  | Demetrius Johnson | 56h |
| 9 | 2.7 | Project Team Checkin #1 | milestone | 0d | 2023-02-08 | 2023-02-08 | 8SS | 139d |  | start no earlier than 2023-02-08 |  |  |
| 10 | 2.8 | Phase I - Project Specs Complete | milestone | 0d | 2023-02-14 | 2023-02-14 | 8 | 108d | 0d |  |  |  |
| 11 | 2.9 | Present Phase I in class | milestone | 0d | 2023-02-15 | 2023-02-15 | 10 | 108d | 0d | start no earlier than 2023-02-15 |  |  |
| 12 | 3 | **Phase II - Project Specification** |  | 26d | 2023-02-15 | 2023-03-22 |  | 108d |  |  |  | 208h |
| 13 | 3.1 | Project Team Checkin #2 | milestone | 0d | 2023-02-22 | 2023-02-22 | 11 | 118d | 0d | start no earlier than 2023-02-22 |  |  |
| 14 | 3.2 | Section 3.0 Data Model and Descrip. |  | 4d | 2023-02-15 | 2023-02-20 | 11 | 108d | 0d | start no earlier than 2023-02-06 | Ryan Sauer | 32h |
| 15 | 3.3 | Section 4.2 - Software Interface Descrip. |  | 4d | 2023-02-21 | 2023-02-24 | 14 | 108d | 0d |  | Jonathan Schall | 32h |
| 16 | 3.4 | Section 4.4 Sequence Diagrams |  | 4d | 2023-02-27 | 2023-03-02 | 15 | 108d | 0d |  | Olivia Pelligrini | 32h |
| 17 | 3.5 | Section 4.5 Collab. and Comm. Diagrams |  | 4d | 2023-03-03 | 2023-03-08 | 16 | 108d | 0d |  | Jonathan Schall | 32h |
| 18 | 3.6 | Section 5.0 Behavioral Model and Descrip. |  | 4d | 2023-03-09 | 2023-03-14 | 17 | 108d | 0d |  | Olivia Pelligrini | 32h |
| 19 | 3.7 | Section 6.0 Restric. Lim. And Restraints |  | 2d | 2023-03-15 | 2023-03-16 | 18 | 108d | 0d |  | Jonathan Schall | 16h |
| 20 | 3.8 | Section 7.0 Validation Criteria |  | 4d | 2023-03-17 | 2023-03-22 | 19 | 108d | 0d |  | Ryan Sauer | 32h |
| 21 | 3.9 | Draft Poster Due March 8th |  | 11d | 2023-02-22 | 2023-03-08 | 13SS | 118d |  |  |  |  |
| 22 | 3.10 | Project Plan and RMMM Due March 8th |  | 11d | 2023-02-22 | 2023-03-08 | 13SS | 118d |  |  |  |  |
| 23 | 3.11 | Phase II - Project Specs Complete | milestone | 0d | 2023-03-22 | 2023-03-22 | 20 | 108d | 0d |  |  |  |
| 24 | 3.12 | Present Phase II in class (DUE MARCH 22 OR 29TH) | milestone | 0d | 2023-03-22 | 2023-03-22 | 23 | 108d | 0d | start no earlier than 2023-03-22 |  |  |
| 25 | 3.13 | Project Team Check In #3 | milestone | 0d | 2023-03-22 | 2023-03-22 | 24 | 108d |  |  |  |  |

Notes:
- 2: The complete requirements document will need to be written up and presented on March 22nd~or 29th~(after your project plan is complete). Your team will be expected to do a 12-minute presentation (powerpoint or equivalent) of the phase 1 artifacts on 2/15/23. Your presentation will be graded on its: organization, technical content, quality of audio-visual aids, and group participation score.
- 11: The complete requirements document will need to be written up and presented on March 22nd~or 29th~(after your project plan is complete). Your team will be expected to do a 12-minute presentation (powerpoint or equivalent) of the phase 1 artifacts on 2/15/23. Your presentation will be graded on its: organization, technical content, quality of audio-visual aids, and group participation score.
- 12: The complete requirements document will need to be written up and presented on March 22nd~or 29th~(after your project plan is complete). Your team will be expected to do a 12-minute presentation (powerpoint or equivalent) of the phase 1 artifacts on 2/15/23. Your presentation will be graded on its: organization, technical content, quality of audio-visual aids, and group participation score.
- 21: Your team is required to create poster using the new~CIS - Electronic Poster Template.pptx~Download CIS - Electronic Poster Template.pptxtemplate found in the canvas file folder. / ~ / Students taking CIS 4951/4961/4971/4981 (Senior Design 1) are required to have at least two team members present their poster during the CECS poster session on 4/14/23 between 1pm and 2:30pm. The first draft of your poster is due 3/8/23. The final poster is due for my review 3/31/23. / ~ / The easiest way to do this to put several significant images or text boxes in a power point in a presentation and to save it in jpg or png or tga formats. You can them paste them into the template in any manner you wish. Make sure that the poster contains complete information on your project: title, team members, client name and company, and Dr. Bruce Maxim (plus any of your senior design instructors) as the supervising faculty members (order of our names is not important). ~One text box of the poster will contain a project summary and one text box will contain the results of the project. / ~/ Important dates subject to change:/ Poster Registration Deadline:~March 13, 2022(?)/ Final Posters Must Be Submitted:~7 April 2023~(Email?~.pdf~poster file: address will be inserted here) / Judging of the Event runs from 1pm till 2:30pm on April 14th. / Please plan to have at least two team members present for your time slot. / The public poster presentation runs from 2:30pm to 4:00pm on April 14th / Awards presentation 4-5pm on April 14th~ / Assigned: 2/10/23 / Date due: 3/31/23
- 22: CIS 4951/4961/4971/4981 Planning Document / Winter 2023 / For your next task this semester, you are to work with your software development team to assemble a project plan. The basis of your project plan is the Pressman planning document template that may be found at:~pmp-template.docx~Download pmp-template.docx. You are also expected to create risk mitigation and monitoring plan based on the Pressman template located at:~rmmm-template.docx~Download rmmm-template.docx. You must include a traceability matrix and a reference list in the appendices. / You are expected to use COCOMO and function points as one of your time estimation techniques. You must use second method for estimating your cost (in dollars assuming your are being paid for this project work) and time estimates and ~reconcile the estimate discrepancies (see the Tiny Tool web site:~http://groups.umd.umich.edu/cis/tinytools/index.html). / Your team will be expected to create a 15 minute presentation (powerpoint) of these documents during the week of March 8th~and upload your work products to Canvas. Your presentation will be graded on its: organization, technical content, quality of audiovisual aids, and group participation score. The participation score will be computed by averaging the individual grades (0=nothing, 1 = poor to 5 = great) assigned by all team members (including yourself). / Annotated copies of a project plan and rmmm document can be found here: / projplan-1.pdfDownload projplan-1.pdf/ rmmm-1.pdfDownload rmmm-1.pdf/ projsched-1.pdfDownload projsched-1.pdf/ ~ / Assigned: 1/25/23 / Date due: 3/08/23
- 24: The complete requirements document will need to be written up and presented on March 22nd~or 29th~(after your project plan is complete). Your team will be expected to do a 12-minute presentation (powerpoint or equivalent) of the phase 1 artifacts on 2/15/23. Your presentation will be graded on its: organization, technical content, quality of audio-visual aids, and group participation score.

| ID | WBS | Task | Type | Duration | Start | Finish | Predecessors | Total slack | Free slack | Resources | Work |
| --- | --- | --- | --- | --- | --- | --- | --- | --- | --- | --- | --- |
| 26 | 4 | **Design (Modify/update project Specs)** |  | 20d | 2023-02-15 | 2023-03-14 |  | 112d |  |  | 80h |
| 27 | 4.1 | Review preliminary software specifications |  | 4w | 2023-02-15 | 2023-03-14 | 8 | 112d | 0d |  |  |
| 28 | 4.2 | Develop functional specifications |  | 4w | 2023-02-15 | 2023-03-14 | 27SS | 114d |  |  |  |
| 29 | 4.3 | Develop prototype based on functional specifications |  | 4w | 2023-02-15 | 2023-03-14 | 27SS | 114d |  |  |  |
| 30 | 4.4 | Review functional specifications |  | 4w | 2023-02-15 | 2023-03-14 | 27SS | 112d | 0d |  |  |
| 31 | 4.5 | Develop Testing Environment and Metric Collection |  | 2w | 2023-02-15 | 2023-02-28 | 27SS | 124d | 0d | Ryan Sauer | 80h |
| 32 | 4.6 | Design Complete | milestone | 0d | 2023-02-28 | 2023-02-28 | 31 | 124d |  |  |  |
| 33 | 5 | **Development** |  | 60d | 2023-01-06 | 2023-03-30 |  | 4d |  |  | 1640h |
| 34 | 5.1 | Review functional specifications |  | 2d | 2023-03-15 | 2023-03-16 | 30 | 112d |  |  |  |
| 35 | 5.2 | Build Clover 4.2 Drone |  | 2w | 2023-01-06 | 2023-01-19 | 1SS | 4d | 0d | Demetrius Johnson | 80h |
| 36 | 5.3 | Drone sensor calibration (Q Ground Control) |  | 3w | 2023-01-20 | 2023-02-09 | 35 | 4d | 0d | Demetrius Johnson | 120h |
| 37 | 5.4 | Successfully Manually fly Drone | milestone | 0d | 2023-02-09 | 2023-02-09 | 36 | 4d | 0d | Demetrius Johnson |  |
| 38 | 5.5 | Build PiCar-X Car |  | 1w | 2023-02-10 | 2023-02-16 | 37 | 4d | 0d | Demetrius Johnson | 40h |
| 39 | 5.6 | Car sensor calibration |  | 1w | 2023-02-17 | 2023-02-23 | 38 | 127d | 0d | Demetrius Johnson | 40h |
| 40 | 5.7 | Successfully manually control car with Web Contr Interface | milestone | 0d | 2023-02-23 | 2023-02-23 | 39 | 127d |  | Demetrius Johnson |  |
| 41 | 5.8 | Learn Drone Simulation Prog Interface |  | 3w | 2023-02-10 | 2023-03-02 | 37SS | 122d |  | Demetrius Johnson | 120h |
| 42 | 5.9 | Learn Drone Programming IDE interface |  | 3w | 2023-02-10 | 2023-03-02 | 37SS | 122d |  | Demetrius Johnson | 120h |
| 43 | 5.10 | Learn Drone vision system interface |  | 3w | 2023-02-10 | 2023-03-02 | 37SS | 102d | 0d | Demetrius Johnson | 120h |
| 44 | 5.11 | Write basic program in drone-vision simulation |  | 1w | 2023-03-03 | 2023-03-09 | 43 | 102d | 0d | Demetrius Johnson | 40h |
| 45 | 5.12 | Run basic drone-vision program in real environment | milestone | 0d | 2023-03-09 | 2023-03-09 | 44 | 102d | 0d | Demetrius Johnson |  |
| 46 | 5.13 | Learn Car Programming IDE interface |  | 1w | 2023-03-10 | 2023-03-16 | 45 | 102d | 0d | Demetrius Johnson | 40h |
| 47 | 5.14 | Learn Car vision system interface |  | 1w | 2023-03-17 | 2023-03-23 | 46 | 107d | 0d | Demetrius Johnson | 40h |
| 48 | 5.15 | Run basic car-vision program in real environment | milestone | 0d | 2023-03-23 | 2023-03-23 | 47 | 107d |  | Demetrius Johnson |  |
| 49 | 5.16 | Process test images in python Open CV to detect red object |  | 1w | 2023-02-17 | 2023-02-23 | 38 | 102d | 0d | Jonathan Schall; Olivia Pelligrini | 80h |
| 50 | 5.17 | Work with python vision system libraries in drone |  | 1.33w | 2023-02-24 | 2023-03-06 | 49 | 120.33d |  | Jonathan Schall; Olivia Pelligrini; Demetrius Johnson | 160h |
| 51 | 5.18 | Work with python vision system libraries in car |  | 2w | 2023-02-24 | 2023-03-09 | 49 | 102d | 0d | Demetrius Johnson; Jonathan Schall; Olivia Pelligrini | 240h |
| 52 | 5.19 | Develop red obstacle vision detection program |  | 2w | 2023-03-10 | 2023-03-23 | 51 | 102d | 0d | Jonathan Schall; Olivia Pelligrini | 160h |
| 53 | 5.20 | Deploy red obstacle vision progam in drone |  | 1w | 2023-03-24 | 2023-03-30 | 52 | 102d |  |  |  |
| 54 | 5.21 | Deploy red obstacle vision progam in car |  | 1w | 2023-03-24 | 2023-03-30 | 52 | 102d |  |  |  |
| 55 | 5.22 | Develop communications between drone and car |  | 6w | 2023-02-17 | 2023-03-30 | 38 | 4d | 0d | Ryan Sauer | 240h |
| 56 | 5.23 | Development complete | milestone | 0d | 2023-03-30 | 2023-03-30 | 55 | 4d | 0d |  |  |
| 57 | 5.24 | Final Poster Due for Submission April 7th (DUE MARCH 31 ON CANVAS) |  | 10d | 2023-03-17 | 2023-03-30 | 46 | 102d |  |  |  |

Notes:
- 29: Design a drone-car model scenario to test our drone-car collaboration program's performance metrics (latency, battery life, etc.). / Metrics to collect: / -Need to test car as computer only / -Need to test drone as computer only / -Need to test drone-car load balance computing / ***test battery life, bandwidth, and latency of car and drone in each of the above scenarios*** / -we need an automated process/model so that the test can be ran over and over again until drone/car cannot operate safely on the remaining battery life.
- 57: Important dates subject to change:/ Poster Registration Deadline:~March 13, 2022(?)/ Final Posters Must Be Submitted:~7 April 2023~(Email?~.pdf~poster file: address will be inserted here) / Judging of the Event runs from 1pm till 2:30pm on April 14th. / Please plan to have at least two team members present for your time slot. / The public poster presentation runs from 2:30pm to 4:00pm on April 14th / Awards presentation 4-5pm on April 14th~ / Assigned: 2/10/23 / Date due: 3/31/23

| ID | WBS | Task | Type | Duration | Start | Finish | Predecessors | Total slack | Free slack | Constraint | Resources | Work |
| --- | --- | --- | --- | --- | --- | --- | --- | --- | --- | --- | --- | --- |
| 58 | 6 | **Testing** |  | 85d | 2023-03-31 | 2023-07-27 |  | 4d |  |  |  | 320h |
| 59 | 6.1 | **Testing Development** |  | 40d | 2023-03-31 | 2023-05-25 |  | 4d |  |  |  | 320h |
| 60 | 6.1.1 | Develop code for metric collection interface/method (bandwidth, latency, battery life) |  | 2w | 2023-03-31 | 2023-04-13 | 56 | 4d | 0d |  | Ryan Sauer | 80h |
| 61 | 6.1.2 | Develop car-only-compute automated test environment |  | 2w | 2023-04-14 | 2023-04-27 | 60 | 4d | 0d |  | Ryan Sauer | 80h |
| 62 | 6.1.3 | Develop drone-only-compute test environment |  | 2w | 2023-04-28 | 2023-05-11 | 61 | 4d | 0d |  | Ryan Sauer | 80h |
| 63 | 6.1.4 | Develop drone-car-compute integration test env. |  | 2w | 2023-05-12 | 2023-05-25 | 62 | 4d | 0d |  | Ryan Sauer | 80h |
| 64 | 6.1.5 | APRIL 14TH SENIOR DESIGN COMP! | milestone | 0d | 2023-04-14 | 2023-04-14 | 56 | 92d |  | start no earlier than 2023-04-14 |  |  |
| 65 | 6.2 | **Unit Testing** |  | 25d | 2023-05-26 | 2023-06-29 |  | 4d |  |  |  |  |
| 66 | 6.2.1 | Review drone code modules |  | 1w | 2023-05-26 | 2023-06-01 | 63 | 4d | 0d |  |  |  |
| 67 | 6.2.2 | Review car code modules |  | 1w | 2023-05-26 | 2023-06-01 | 66SS | 57d |  |  |  |  |
| 68 | 6.2.3 | Review the automated testing environment |  | 1w | 2023-05-26 | 2023-06-01 | 66SS | 4d | 0d |  |  |  |
| 69 | 6.2.4 | Modify code |  | 2w | 2023-06-02 | 2023-06-15 | 68 | 4d | 0d |  |  |  |
| 70 | 6.2.5 | Re-test modified code |  | 2w | 2023-06-16 | 2023-06-29 | 69 | 4d | 0d |  |  |  |
| 71 | 6.2.6 | Unit testing complete | milestone | 0d | 2023-06-29 | 2023-06-29 | 70 | 4d | 0d |  |  |  |
| 72 | 6.3 | **Integration Testing** |  | 20d | 2023-06-30 | 2023-07-27 |  | 4d |  |  |  |  |
| 73 | 6.3.1 | Test module integration |  | 2w | 2023-06-30 | 2023-07-13 | 71 | 4d | 0d |  |  |  |
| 74 | 6.3.2 | Modify code |  | 1w | 2023-07-14 | 2023-07-20 | 73 | 4d | 0d |  |  |  |
| 75 | 6.3.3 | Re-test modified code |  | 1w | 2023-07-21 | 2023-07-27 | 74 | 4d | 0d |  |  |  |
| 76 | 6.3.4 | Drone-car load balance Integration testing complete | milestone | 0d | 2023-07-27 | 2023-07-27 | 75 | 4d | 0d |  |  |  |
| 77 | 7 | **Results Evaluation** |  | 12d | 2023-07-28 | 2023-08-14 |  | 4d |  |  |  |  |
| 78 | 7.1 | Deploy software |  | 1w | 2023-07-28 | 2023-08-03 | 76 | 4d | 0d |  |  |  |
| 79 | 7.2 | Obtain client (Dr. Zheng Song) feedback |  | 2d | 2023-08-04 | 2023-08-07 | 78 | 4d | 0d |  |  |  |
| 80 | 7.3 | Evaluate testing information |  | 1w | 2023-08-08 | 2023-08-14 | 79 | 4d | 0d |  |  |  |
| 81 | 7.4 | Pilot complete | milestone | 0d | 2023-08-14 | 2023-08-14 | 80 | 4d | 0d |  |  |  |

Notes:
- 64: Important dates subject to change:/ Poster Registration Deadline:~March 13, 2022(?)/ Final Posters Must Be Submitted:~7 April 2023~(Email?~.pdf~poster file: address will be inserted here) / Judging of the Event runs from 1pm till 2:30pm on April 14th. / Please plan to have at least two team members present for your time slot. / The public poster presentation runs from 2:30pm to 4:00pm on April 14th / Awards presentation 4-5pm on April 14th~

| ID | WBS | Task | Type | Duration | Start | Finish | Predecessors | Total slack | Free slack | Constraint | Resources | Work |
| --- | --- | --- | --- | --- | --- | --- | --- | --- | --- | --- | --- | --- |
| 82 | 8 | **Post Implementation Review** |  | 1d | 2023-08-15 | 2023-08-15 |  | 4d |  |  |  | 8h |
| 83 | 8.1 | Document lessons learned |  | 1d | 2023-08-15 | 2023-08-15 | 81 | 4d | 0d |  | Ryan Sauer | 8h |
| 84 | 8.2 | Post implementation review complete | milestone | 0d | 2023-08-15 | 2023-08-15 | 83 | 4d | 0d |  |  |  |
| 85 | 9 | Drone-Car Project Completed! | milestone | 0d | 2023-08-15 | 2023-08-15 | 84 | 4d |  |  |  |  |
| 86 | 10 | AUGUST 15TH CLASSES END SUMMER FULL | milestone | 0d | 2023-08-15 | 2023-08-15 | 84 | 4d |  | start no earlier than 2023-08-15 |  |  |
| 87 | 11 | AUGUST 22ND SEMESTER ENDS | milestone | 0d | 2023-08-22 | 2023-08-22 | 86 | 0d |  | start no earlier than 2023-08-22 |  |  |

Notes:
- 85: SUMMER 2023 FULL SEMESTER: Final day of classes is August 14, last day of exams is August 22nd!
